| id | phase_id | component_id | section_id | name | trade | kind | duration_days | crew_size | pre_construction_offset_working_days | lead_up_working_days | derived_from | scheduled_start | scheduled_end | earliest_start | latest_start | float_days | status | lead_time_days | depends_on |
| --- | --- | --- | --- | --- | --- | --- | --- | --- | --- | --- | --- | --- | --- | --- | --- | --- | --- | --- | --- |
| general.permitting | pre_construction | permits_and_planning | general_conditions | Building permit walk-in | general | work | 1 | 1 | 15 | 2 | general_conditions 4A Permit is a 1-day work task, not a lead_time. Will gets permits same-day ~90%. | 2026-09-21 | 2026-09-21 | 2026-09-21 | 2026-10-15 | 18 | not_started |  |  |
| general.pre_construction_walkthrough | pre_construction | permits_and_planning | general_conditions | Pre-construction walkthrough with customer | general | work | 0.5 | 1 | 10 | 1 | general_conditions 4S PM walks customer through plan 2 weeks before on-site start. | 2026-09-28 | 2026-09-28 | 2026-09-28 | 2027-01-08 | 67 | not_started |  |  |
| checkpoint.selections_finalized | pre_construction | checkpoints | general_conditions | Customer selections finalized | general | milestone | 0 | 0 | 15 | 5 | general_conditions 4P Mandatory selections-finalized checkpoint 3 weeks before on-site start. Gates finish material orders. | 2026-09-21 | 2026-09-21 | 2026-09-21 | 2026-11-18 | 40.5 | not_started |  |  |
| permit.tdec_septic | pre_construction | tdec_septic | general_conditions | TDEC septic permit application & review | general | lead_time | 0 | 0 | 30 | 0 | general_conditions addition.tdec Scope adds bedroom + bathroom and explicitly names TDEC septic evaluation. 6-week window, offset to pre-construction start. Gates excavation. | 2026-08-28 | 2026-10-09 | 2026-08-28 | 2026-09-09 | 7 | not_started | 42 |  |
| prep.amperage_check | pre_construction | amperage_check | electrical | Verify existing service capacity for new subpanel | general | work | 0.5 | 1 | 15 | 1 | electrical addition.amperage 100A subpanel in scope; scope assumes existing service supports it — verify before signed contract. | 2026-09-21 | 2026-09-21 | 2026-09-21 | 2027-01-08 | 72 | not_started |  |  |
| checkpoint.equipment_confirmed_demo | pre_construction | checkpoints | demolition_site_work | Confirm demo equipment (dumpster, saw) | general | milestone | 0 | 0 | 10 | 2 | demolition_site_work 4O 2-week-out equipment checkpoint for demo phase. | 2026-09-28 | 2026-09-28 | 2026-09-28 | 2027-01-08 | 67.5 | not_started |  |  |
| checkpoint.equipment_confirmed_excavation | pre_construction | checkpoints | excavation_foundation | Confirm mini-ex + concrete supplier | general | milestone | 0 | 0 | 10 | 2 | excavation_foundation 4O 2-week-out equipment checkpoint for excavation. | 2026-09-28 | 2026-09-28 | 2026-09-28 | 2027-01-08 | 67.5 | not_started |  |  |
| checkpoint.equipment_confirmed_roof | pre_construction | checkpoints | roof_framing_roofing | Confirm scaffolding for roof | general | milestone | 0 | 0 | 10 | 2 | roof_framing_roofing 4O Scaffolding confirmation for roof phase. | 2026-09-28 | 2026-09-28 | 2026-09-28 | 2027-01-08 | 67.5 | not_started |  |  |
| checkpoint.equipment_confirmed_drywall | pre_construction | checkpoints | drywall | Confirm drywall dumpster swap | general | milestone | 0 | 0 | 10 | 2 | drywall 4O 2-week checkpoint for drywall equipment. | 2026-09-28 | 2026-09-28 | 2026-09-28 | 2027-01-08 | 67.5 | not_started |  |  |
| order.windows | procurement_long_leads | procurement_windows | windows_doors_weatherproofing | Order windows & exterior door | general | work | 0.5 | 1 |  | 2 | windows_doors_weatherproofing 4R PM places order for 3x windows + transom + 1 exterior door. | 2026-10-12 | 2026-10-12 | 2026-10-12 | 2026-10-21 | 7.5 | not_started |  |  |
| wait.windows | procurement_long_leads | procurement_windows | windows_doors_weatherproofing | Windows supplier lead time | general | lead_time | 0 | 0 |  | 0 | windows_doors_weatherproofing 4R Stock windows 21-day supplier window (default). | 2026-10-12 | 2026-11-02 | 2026-10-12 | 2026-10-22 | 7.5 | not_started | 21 | order.windows FS |
| checkpoint.windows_arrived | procurement_long_leads | procurement_windows | windows_doors_weatherproofing | Windows delivered to site | general | milestone | 0 | 0 |  | 0 | windows_doors_weatherproofing 4R PM confirms arrival; gates windows.install. | 2026-11-02 | 2026-11-02 | 2026-11-02 | 2026-11-16 | 7.5 | not_started |  | wait.windows FS |
| order.lvl | procurement_long_leads | procurement_lvl | structural_modifications | Order LVL beam (3-ply 14") | general | work | 0.5 | 1 |  | 2 | structural_modifications 4R Order LVL early — safety buffer for market fluctuations. | 2026-10-12 | 2026-10-12 | 2026-10-12 | 2026-12-18 | 45 | not_started |  |  |
| wait.lvl | procurement_long_leads | procurement_lvl | structural_modifications | LVL supplier lead time | general | lead_time | 0 | 0 |  | 0 | structural_modifications 4R, addition.lvl Default 14 calendar day buffer for standard LVL availability. | 2026-10-12 | 2026-10-26 | 2026-10-12 | 2026-12-18 | 45 | not_started | 14 | order.lvl FS |
| checkpoint.lvl_arrived | procurement_long_leads | procurement_lvl | structural_modifications | LVL delivered to site | general | milestone | 0 | 0 |  | 0 | structural_modifications 4R LVL arrival checkpoint gates structural.install_lvl. | 2026-10-26 | 2026-10-26 | 2026-10-26 | 2027-01-06 | 45 | not_started |  | wait.lvl FS |
| order.subpanel | procurement_long_leads | procurement_subpanel | electrical | Order 100A subpanel | general | work | 0.5 | 1 |  | 2 | electrical 4R PM orders 100A subpanel before rough electrical. | 2026-10-12 | 2026-10-12 | 2026-10-12 | 2026-11-04 | 17 | not_started |  |  |
| wait.subpanel | procurement_long_leads | procurement_subpanel | electrical | Subpanel supplier lead time | general | lead_time | 0 | 0 |  | 0 | electrical 4R Typical 7-14 calendar day panel lead. | 2026-10-12 | 2026-10-22 | 2026-10-12 | 2026-11-04 | 17 | not_started | 10 | order.subpanel FS |
| checkpoint.subpanel_arrived | procurement_long_leads | procurement_subpanel | electrical | Subpanel delivered | general | milestone | 0 | 0 |  | 0 | electrical 4R Gates electrical.rough_in. | 2026-10-22 | 2026-10-22 | 2026-10-22 | 2026-11-18 | 17 | not_started |  | wait.subpanel FS |
| order.minisplit | procurement_long_leads | procurement_minisplit | hvac | Order mini-split unit | general | work | 0.5 | 1 |  | 2 | hvac 4R Order mini-split near dried-in per Will's use-date rule. | 2026-10-12 | 2026-10-12 | 2026-10-12 | 2026-12-10 | 39.5 | not_started |  |  |
| wait.minisplit | procurement_long_leads | procurement_minisplit | hvac | Mini-split supplier lead time | general | lead_time | 0 | 0 |  | 0 | hvac 4R 7-14 calendar-day lead. | 2026-10-12 | 2026-10-22 | 2026-10-12 | 2026-12-11 | 39.5 | not_started | 10 | order.minisplit FS |
| checkpoint.minisplit_arrived | procurement_long_leads | procurement_minisplit | hvac | Mini-split delivered | general | milestone | 0 | 0 |  | 0 | hvac 4R Gates hvac.minisplit_install. | 2026-10-22 | 2026-10-22 | 2026-10-22 | 2026-12-23 | 39.5 | not_started |  | wait.minisplit FS |
| order.tankless | procurement_long_leads | procurement_tankless | hvac | Order tankless water heater | general | work | 0.5 | 1 |  | 2 | hvac 4R, 4H Order tankless — must arrive before plumbing.tank_set. | 2026-10-12 | 2026-10-12 | 2026-10-12 | 2026-11-03 | 16.5 | not_started |  |  |
| wait.tankless | procurement_long_leads | procurement_tankless | hvac | Tankless supplier lead time | general | lead_time | 0 | 0 |  | 0 | hvac 4R 7-14 calendar day lead. | 2026-10-12 | 2026-10-22 | 2026-10-12 | 2026-11-04 | 16.5 | not_started | 10 | order.tankless FS |
| checkpoint.tankless_arrived | procurement_long_leads | procurement_tankless | hvac | Tankless delivered | general | milestone | 0 | 0 |  | 0 | hvac 4R Gates plumbing.tank_set. | 2026-10-22 | 2026-10-22 | 2026-10-22 | 2026-11-18 | 16.5 | not_started |  | wait.tankless FS |
| order.tile | procurement_long_leads | procurement_tile | master_bath | Order tile (shower + floor) | general | work | 0.5 | 1 |  | 2 | master_bath 4R, 4P Order tile after selections locked. | 2026-10-12 | 2026-10-12 | 2026-10-12 | 2026-11-18 | 25.5 | not_started |  | checkpoint.selections_finalized FS |
| wait.tile | procurement_long_leads | procurement_tile | master_bath | Tile supplier lead time | general | lead_time | 0 | 0 |  | 0 | master_bath 4R 14-21 calendar day tile lead. | 2026-10-12 | 2026-11-02 | 2026-10-12 | 2026-11-19 | 25.5 | not_started | 21 | order.tile FS |
| checkpoint.tile_arrived | procurement_long_leads | procurement_tile | master_bath | Tile delivered | general | milestone | 0 | 0 |  | 0 | master_bath 4R Gates tile.shower_substrate. | 2026-11-02 | 2026-11-02 | 2026-11-02 | 2026-12-14 | 25.5 | not_started |  | wait.tile FS |
| order.vanity | procurement_long_leads | procurement_vanity | master_bath | Order vanity & fixtures | general | work | 0.5 | 1 |  | 2 | master_bath 4R Vanity + shower valve + toilet + faucets. | 2026-10-12 | 2026-10-12 | 2026-10-12 | 2026-12-07 | 36.5 | not_started |  | checkpoint.selections_finalized FS |
| wait.vanity | procurement_long_leads | procurement_vanity | master_bath | Vanity supplier lead time | general | lead_time | 0 | 0 |  | 0 | master_bath 4R 2-week vanity lead. | 2026-10-12 | 2026-10-26 | 2026-10-12 | 2026-12-08 | 36.5 | not_started | 14 | order.vanity FS |
| checkpoint.vanity_arrived | procurement_long_leads | procurement_vanity | master_bath | Vanity delivered | general | milestone | 0 | 0 |  | 0 | master_bath 4R Gates cabinets.vanity_install. | 2026-10-26 | 2026-10-26 | 2026-10-26 | 2026-12-22 | 36.5 | not_started |  | wait.vanity FS |
| order.flooring | procurement_long_leads | procurement_flooring | interior_finish | Order flooring | general | work | 0.5 | 1 |  | 2 | interior_finish 4R LVP flooring order. | 2026-10-12 | 2026-10-12 | 2026-10-12 | 2026-12-07 | 36.5 | not_started |  | checkpoint.selections_finalized FS |
| wait.flooring | procurement_long_leads | procurement_flooring | interior_finish | Flooring supplier lead time | general | lead_time | 0 | 0 |  | 0 | interior_finish 4R ~10 calendar day standard flooring lead. | 2026-10-12 | 2026-10-22 | 2026-10-12 | 2026-12-08 | 36.5 | not_started | 10 | order.flooring FS |
| checkpoint.flooring_arrived | procurement_long_leads | procurement_flooring | interior_finish | Flooring delivered | general | milestone | 0 | 0 |  | 0 | interior_finish 4R Gates flooring.install. | 2026-10-22 | 2026-10-22 | 2026-10-22 | 2026-12-18 | 36.5 | not_started |  | wait.flooring FS |
| order.paint | procurement_long_leads | procurement_paint | interior_finish | Order paint | general | work | 0.5 | 1 |  | 0 | interior_finish 4R Paint is short-lead (≤7d) — single order task, no wait/checkpoint. | 2026-10-12 | 2026-10-12 | 2026-10-12 | 2026-12-10 | 39.5 | not_started |  | checkpoint.selections_finalized FS |
| order.shower_glass_template | procurement_long_leads | procurement_shower_glass | master_bath | Template shower glass | glazing | work | 0.5 | 2 |  | 1 | master_bath 4R Glass templated after shower tile grout+seal complete. | 2026-12-22 | 2026-12-22 | 2026-12-22 | 2026-12-23 | 1 | not_started |  | tile.grout_seal FS |
| wait.shower_glass | procurement_long_leads | procurement_shower_glass | master_bath | Shower glass fabrication | general | lead_time | 0 | 0 |  | 0 | master_bath 4R 7-14 calendar day fab from template. | 2026-12-23 | 2027-01-06 | 2026-12-23 | 2026-12-28 | 1 | not_started | 10 | order.shower_glass_template FS |
| checkpoint.shower_glass_arrived | procurement_long_leads | procurement_shower_glass | master_bath | Shower glass ready to install | general | milestone | 0 | 0 |  | 0 | master_bath 4R Gates glazing.shower_install. | 2027-01-07 | 2027-01-07 | 2027-01-07 | 2027-01-08 | 1 | not_started |  | wait.shower_glass FS |
| equipment.dumpster_arrive | site_prep | site_setup | demolition_site_work | Dumpster arrives | general | work | 0.5 | 1 |  | 0 | demolition_site_work 4O Dumpster lands day before demo phase. | 2026-10-12 | 2026-10-12 | 2026-10-12 | 2026-10-12 | 0 | not_started |  |  |
| general.site_setup | site_prep | site_setup | general_conditions | Site protection & staging | general | work | 0.5 | 2 |  | 1 | general_conditions editor.spine Site protection: dust barriers, floor protection, staging. | 2026-10-12 | 2026-10-12 | 2026-10-12 | 2026-10-12 | 0 | not_started |  | equipment.dumpster_arrive FS |
| prep.heat_pump_relocate | site_prep | prep_work_before_demo | demolition_site_work | Relocate existing heat pump | hvac | work | 1 | 2 |  | 1 | demolition_site_work 4K, addition.heat_pump Heat pump must be relocated BEFORE main demo starts (min 3 days before). Runs in site_prep, not demo phase. | 2026-10-13 | 2026-10-13 | 2026-10-13 | 2026-10-13 | 0 | not_started |  | general.site_setup FS |
| prep.electrical_disconnect_relocate | site_prep | prep_work_before_demo | demolition_site_work | Relocate electrical disconnect | electrical | work | 0.5 | 2 |  | 1 | demolition_site_work 4K, addition.heat_pump Existing disconnect relocated with heat pump before demo. | 2026-10-13 | 2026-10-13 | 2026-10-13 | 2026-10-13 | 0.5 | not_started |  | general.site_setup FS |
| early.acrylic_shower_swap | site_prep | customer_early_items | hall_bath_bedroom_closeout | Hall bath acrylic shower swap (customer early item) | plumbing | work | 1 | 2 |  | 1 | hall_bath_bedroom_closeout 4V, addition.customer_early Customer-requested early item — homeowner wants working shower before main demo. Runs Day 1 in site_prep, NOT in interior_finishes. | 2026-10-13 | 2026-10-13 | 2026-10-13 | 2027-01-07 | 55.5 | not_started |  | general.site_setup FS |
| equipment.mini_ex_arrive | site_prep | site_setup | excavation_foundation | Mini-excavator arrives | general | work | 0.5 | 1 |  | 0 | excavation_foundation 4O Mini-ex lands day before excavation. | 2026-10-20 | 2026-10-20 | 2026-10-20 | 2026-10-20 | 0 | not_started |  | demo.haul_out FS |
| demo.walkway_and_obstructions | demo_and_protection | demo_main | demolition_site_work | Saw-cut walkway, remove railroad ties & obstructions | demo | work | 1 | 3 |  | 2 | demolition_site_work editor.demo Main demo: saw cut concrete, remove RR ties + obstructions. Gated on heat-pump relocate + permits. | 2026-10-16 | 2026-10-16 | 2026-10-16 | 2026-10-16 | 0 | not_started |  | prep.heat_pump_relocate FS 2, prep.electrical_disconnect_relocate FS 2, general.permitting FS |
| demo.expose_bearing_wall | demo_and_protection | demo_main | structural_modifications | Expose existing load-bearing wall for LVL | demo | work | 1 | 3 |  | 1 | structural_modifications addition.lvl Existing wall opened to install LVL. | 2026-10-19 | 2026-10-19 | 2026-10-19 | 2026-10-19 | 0 | not_started |  | demo.walkway_and_obstructions FS |
| demo.hall_bath_window | demo_and_protection | demo_retrofit | hall_bath_bedroom_closeout | Hall bath window infill demo | demo | work | 0.5 | 2 |  | 1 | hall_bath_bedroom_closeout retrofit.detect Retrofit demo for hall bath modification — separate component, does NOT gate new addition. | 2026-10-19 | 2026-10-19 | 2026-10-19 | 2026-12-23 | 43 | not_started |  | demo.walkway_and_obstructions FS |
| demo.haul_out | demo_and_protection | demo_main | demolition_site_work | Haul out demo debris | demo | work | 0.5 | 3 |  | 0 | demolition_site_work editor.demo Cleanup pass. | 2026-10-20 | 2026-10-20 | 2026-10-20 | 2026-10-20 | 0 | not_started |  | demo.expose_bearing_wall FS |
| excavation.dig | structural_and_shell | foundation | excavation_foundation | Excavate footings + slab area | excavation | work | 2 | 2 |  | 1 | excavation_foundation editor.foundation Excavation for perimeter footings + slab. Gated on TDEC and demo. | 2026-10-21 | 2026-10-22 | 2026-10-21 | 2026-10-21 | 0 | not_started |  | equipment.mini_ex_arrive FS, permit.tdec_septic FS |
| foundation.form_and_prep | structural_and_shell | foundation | excavation_foundation | Form footings + gravel + vapor + rebar | concrete | work | 1.5 | 4 |  | 1 | excavation_foundation 4B Monolithic prep: form footings + gravel + vapor barrier + rebar all in one task. | 2026-10-23 | 2026-10-26 | 2026-10-23 | 2026-10-23 | 0 | not_started |  | excavation.dig FS |
| inspect.footing | structural_and_shell | foundation | excavation_foundation | Footing/slab inspection | inspector | inspection | 0.5 | 1 |  | 1 | excavation_foundation 4B Single footing/slab inspection for monolithic pour. | 2026-10-27 | 2026-10-27 | 2026-10-27 | 2026-10-27 | 0 | not_started |  | foundation.form_and_prep FS 1 |
| foundation.monolithic_pour | structural_and_shell | foundation | excavation_foundation | Monolithic pour (footings + slab) | concrete | work | 1 | 4 |  | 1 | excavation_foundation 4B Single monolithic pour. Continuous 12x12 footings + 4" slab same day. | 2026-10-28 | 2026-10-28 | 2026-10-28 | 2026-10-28 | 0 | not_started |  | inspect.footing FS |
| foundation.cure | structural_and_shell | foundation | excavation_foundation | Concrete cure | general | lead_time | 0 | 0 |  | 0 | excavation_foundation 4B 2-day cure before framing loads slab. | 2026-10-29 | 2026-10-30 | 2026-10-29 | 2026-10-29 | 0 | not_started | 2 | foundation.monolithic_pour FS |
| framing.floor_system | structural_and_shell | framing | framing | Floor system + subfloor | framing | work | 2 | 3 |  | 1 | framing editor.framing Dimensional/engineered floor system with glued+fastened subfloor. | 2026-11-02 | 2026-11-03 | 2026-11-02 | 2026-11-02 | 0 | not_started |  | foundation.cure FS |
| framing.basement_walls | structural_and_shell | framing | framing | Basement 2x4 walls | framing | work | 1.5 | 3 |  | 1 | framing editor.framing Basement walls 2x4 @ 16 OC. | 2026-11-02 | 2026-11-03 | 2026-11-02 | 2027-01-07 | 41 | not_started |  | foundation.cure FS |
| framing.exterior_walls | structural_and_shell | framing | framing | Exterior & interior walls (2nd floor) | framing | work | 3 | 3 |  | 1 | framing editor.framing Exterior + interior 2x4 walls + elevator shaft framing. | 2026-11-04 | 2026-11-06 | 2026-11-04 | 2026-11-04 | 0 | not_started |  | framing.floor_system FS |
| framing.elevator_shaft | structural_and_shell | framing | framing | Frame future elevator shaft (4'x4') | framing | work | 0.5 | 2 |  | 0 | framing editor.framing Elevator shaft framed as part of wall framing. Location per PM Interview — assumed inside addition footprint. | 2026-11-05 | 2026-11-05 | 2026-11-05 | 2027-01-08 | 39 | not_started |  | framing.exterior_walls SS 1 |
| structural.temp_shoring | structural_and_shell | lvl_subchain | structural_modifications | Temporary shoring for LVL | framing | work | 0.5 | 2 |  | 1 | structural_modifications addition.lvl Temp shoring runs independent of new addition framing. | 2026-10-20 | 2026-10-20 | 2026-10-20 | 2027-01-06 | 49 | not_started |  | demo.expose_bearing_wall FS |
| structural.install_lvl | structural_and_shell | lvl_subchain | structural_modifications | Install LVL beam (3-ply 14", ~15'-6" span) | framing | work | 1.5 | 3 |  | 1 | structural_modifications addition.lvl LVL install replaces existing load-bearing wall. | 2026-10-26 | 2026-10-27 | 2026-10-26 | 2027-01-06 | 45 | not_started |  | structural.temp_shoring FS, checkpoint.lvl_arrived FS |
| structural.remove_temp_shoring | structural_and_shell | lvl_subchain | structural_modifications | Remove temp shoring | framing | work | 0.5 | 2 |  | 0 | structural_modifications addition.lvl Shoring removed post-install. | 2026-10-28 | 2026-10-28 | 2026-10-28 | 2027-01-08 | 45 | not_started |  | structural.install_lvl FS |
| framing.roof | structural_and_shell | framing | roof_framing_roofing | Roof framing (stick-frame) | framing | work | 3 | 3 |  | 1 | roof_framing_roofing addition.trusses Stick-frame default for small (~300 sqft roof) addition. Scope says 'truss or rafter — TBD in design phase'; defaulting to stick-frame per rules. | 2026-11-10 | 2026-11-13 | 2026-11-10 | 2026-11-10 | 0 | not_started |  | framing.exterior_walls FS |
| roof.concealed_buffer | structural_and_shell | roof_tie_in | roof_framing_roofing | Concealed roof tie-in buffer | general | lead_time | 0 | 0 |  | 0 | roof_framing_roofing addition.roof_tie_in 3-day change-order buffer for concealed conditions at tie-in to existing 6/12 roof. | 2026-11-12 | 2026-11-16 | 2026-11-12 | 2027-01-05 | 33.5 | not_started | 3 | framing.roof SS 1 |
| framing.sheathing | structural_and_shell | framing | roof_framing_roofing | Roof sheathing | framing | work | 1 | 3 |  | 0 | roof_framing_roofing editor.framing Sheathing after roof framing. | 2026-11-16 | 2026-11-16 | 2026-11-16 | 2026-11-16 | 0 | not_started |  | framing.roof FS |
| windows.install | structural_and_shell | envelope | windows_doors_weatherproofing | Install windows & exterior door | windows_doors | work | 2 | 2 |  | 1 | windows_doors_weatherproofing 4J, addition.windows Windows install AS SOON AS roof framed. Runs parallel with underlayment. NOT gated on dried_in. | 2026-11-16 | 2026-11-17 | 2026-11-16 | 2026-11-16 | 0 | not_started |  | framing.roof FS, checkpoint.windows_arrived FS |
| roofing.underlayment | structural_and_shell | roofing | roof_framing_roofing | Synthetic underlayment, drip edge, flashing | roofing | work | 1 | 3 |  | 1 | roof_framing_roofing addition.mep_gate Underlayment gates MEPs (weatherproof). | 2026-11-17 | 2026-11-17 | 2026-11-17 | 2026-11-17 | 0 | not_started |  | framing.sheathing FS |
| roofing.shingles | structural_and_shell | roofing | roof_framing_roofing | Architectural shingles + ridge vent | roofing | work | 1 | 3 |  | 0 | roof_framing_roofing editor.roofing Small roof ~300 sqft — 1 day shingle install. | 2026-11-18 | 2026-11-18 | 2026-11-18 | 2027-01-04 | 28.5 | not_started |  | roofing.underlayment FS |
| exterior.sheathing_wrb | structural_and_shell | exterior_finishes | exterior_finishes | Sheathing + WRB | framing | work | 1 | 3 |  | 0 | exterior_finishes editor.exterior Wall sheathing + weather-resistive barrier. | 2026-11-10 | 2026-11-10 | 2026-11-10 | 2027-01-04 | 33.5 | not_started |  | framing.exterior_walls FS |
| milestone.dried_in | structural_and_shell | roofing | roof_framing_roofing | Building dried in | general | milestone | 0 | 0 |  | 0 | roof_framing_roofing editor.milestones Dried-in milestone gates exterior siding (NOT MEPs, per addition rules). | 2026-11-19 | 2026-11-19 | 2026-11-19 | 2027-01-05 | 28.5 | not_started |  | roofing.shingles FS, windows.install FS, exterior.sheathing_wrb FS |
| exterior.siding_trim_gutters | structural_and_shell | exterior_finishes | exterior_finishes | Vinyl siding + fascia/soffit + seamless gutters | siding | work | 3 | 3 |  | 1 | exterior_finishes editor.exterior_pattern Same-crew exterior block: siding + fascia + gutters. Runs parallel to interior. | 2026-11-19 | 2026-11-23 | 2026-11-19 | 2027-01-05 | 28.5 | not_started |  | milestone.dried_in FS |
| electrical.rough_in | rough_trades | rough_electrical | electrical | Electrical rough-in + subpanel | electrical | work | 3 | 2 |  | 1 | electrical 4I, addition.mep_gate Rough electrical after building weatherproof (underlayment + windows). Subpanel + all boxes + dedicated 30A elevator circuit. | 2026-11-18 | 2026-11-20 | 2026-11-18 | 2026-11-18 | 0.5 | not_started |  | roofing.underlayment FS, windows.install FS, checkpoint.subpanel_arrived FS |
| plumbing.tank_set | rough_trades | rough_plumbing | plumbing | Set tankless water heater | plumbing | work | 0.5 | 2 |  | 1 | hvac 4H Tankless set BEFORE plumbing rough-in per Will's rule. | 2026-11-18 | 2026-11-18 | 2026-11-18 | 2026-11-18 | 0 | not_started |  | roofing.underlayment FS, windows.install FS, checkpoint.tankless_arrived FS |

| id | phase_id | component_id | section_id | name | trade | kind | duration_days | crew_size | lead_up_working_days | derived_from | scheduled_start | scheduled_end | earliest_start | latest_start | float_days | status | lead_time_days | depends_on |
| --- | --- | --- | --- | --- | --- | --- | --- | --- | --- | --- | --- | --- | --- | --- | --- | --- | --- | --- |
| plumbing.rough_in | rough_trades | rough_plumbing | plumbing | Plumbing rough-in (master bath + W/D relocate) | plumbing | work | 3 | 2 | 1 | plumbing 4I, 4H Rough stubs into set tankless. Master bath supply/DWV + W/D relocate. | 2026-11-18 | 2026-11-23 | 2026-11-18 | 2026-11-18 | 0 | not_started |  | plumbing.tank_set FS |
| hvac.minisplit_rough | rough_trades | rough_hvac | hvac | Mini-split line set rough | hvac | work | 0.5 | 1 | 1 | hvac 4G, editor.minisplit Mini-split rough = line set only, 0.5d 1 person. | 2026-11-18 | 2026-11-18 | 2026-11-18 | 2026-11-23 | 3 | not_started |  | roofing.underlayment FS, windows.install FS |
| hvac.wh_vent_extend | rough_trades | rough_hvac | demolition_site_work | Extend gas WH vent through new roof | hvac | work | 0.5 | 2 | 1 | demolition_site_work editor.mep Existing gas WH vent extended through new roof — venting-only change, no new WH install for existing unit. | 2026-11-19 | 2026-11-19 | 2026-11-19 | 2027-01-08 | 31 | not_started |  | roofing.shingles FS |
| inspect.rough_bundled | rough_inspections | rough_inspections | framing | Bundled rough MEP + framing inspection | inspector | inspection | 0.5 | 1 | 1 | framing 4C ONE bundled inspection: rough E/P/M + framing, one inspector, one day. | 2026-11-24 | 2026-11-24 | 2026-11-24 | 2026-11-24 | 0 | not_started |  | electrical.rough_in FS 1, plumbing.rough_in FS 1, hvac.minisplit_rough FS 1 |
| buffer.post_rough_inspection | rough_inspections | rough_inspections | framing | Post-inspection punch buffer | general | lead_time | 0 | 0 | 0 | framing 4D 2-day punch buffer standard after rough inspection. | 2026-11-25 | 2026-11-30 | 2026-11-25 | 2026-11-25 | 0 | not_started | 2 | inspect.rough_bundled FS |
| insulation.install | insulation_and_drywall | insulation | insulation_air_sealing | Insulation & air sealing | insulation | work | 1 | 2 | 1 | insulation_air_sealing editor.insulation 1-day typical insulation for addition-scale. | 2026-12-01 | 2026-12-01 | 2026-12-01 | 2026-12-01 | 0 | not_started |  | buffer.post_rough_inspection FS |
| inspect.insulation | insulation_and_drywall | insulation | insulation_air_sealing | Insulation inspection | inspector | inspection | 0.5 | 1 | 1 | insulation_air_sealing editor.inspections Insulation inspected before drywall. | 2026-12-03 | 2026-12-03 | 2026-12-03 | 2026-12-03 | 0 | not_started |  | insulation.install FS 1 |
| equipment.drywall_dumpster | insulation_and_drywall | drywall | drywall | Drywall dumpster swap | general | work | 0.5 | 1 | 0 | drywall 4O Dumpster swap day before drywall hang. | 2026-12-03 | 2026-12-03 | 2026-12-03 | 2026-12-03 | 0 | not_started |  | inspect.insulation FS |
| drywall.consolidated | insulation_and_drywall | drywall | drywall | Drywall hang/tape/sand (addition + retrofit) | drywall | work | 5 | 3 | 2 | drywall editor.drywall_consolidated Consolidated single hang+tape+sand block covering addition + retrofit hall bath patch. Cure waits embedded in duration. | 2026-12-04 | 2026-12-10 | 2026-12-04 | 2026-12-04 | 0 | not_started |  | inspect.insulation FS, equipment.drywall_dumpster FS |
| paint.phase_1 | insulation_and_drywall | paint_phase1 | interior_finish | Paint phase 1 (primer + ceiling finish) | paint | work | 1 | 2 | 1 | interior_finish 4E 1d covers primer (walls + ceilings) AM + ceiling finish coat PM same day per Will's standard sequence. | 2026-12-11 | 2026-12-11 | 2026-12-11 | 2026-12-11 | 0 | not_started |  | drywall.consolidated FS, order.paint FS |
| tile.shower_substrate | interior_finishes | tile | master_bath | Shower substrate & waterproofing (Kerdi/Wedi) | tile | work | 1.5 | 2 | 1 | master_bath 4L, editor.waterproofing Substrate + Kerdi/Wedi before wall tile. | 2026-12-14 | 2026-12-15 | 2026-12-14 | 2026-12-14 | 0 | not_started |  | paint.phase_1 FS, checkpoint.tile_arrived FS |
| tile.shower_walls_floor | interior_finishes | tile | master_bath | Tile shower walls + bathroom floor | tile | work | 3 | 2 | 0 | master_bath editor.tile Custom tile shower + floor tile. | 2026-12-15 | 2026-12-18 | 2026-12-15 | 2026-12-15 | 0 | not_started |  | tile.shower_substrate FS |
| tile.grout_seal | interior_finishes | tile | master_bath | Grout & seal | tile | work | 1 | 2 | 0 | master_bath editor.tile Grout + seal after tile set day. | 2026-12-21 | 2026-12-22 | 2026-12-21 | 2026-12-21 | 0 | not_started |  | tile.shower_walls_floor FS 1 |
| flooring.install | interior_finishes | flooring | interior_finish | LVP flooring install | flooring | work | 2 | 2 | 1 | interior_finish 4L Flooring after paint phase 1 and tile substrate set. | 2026-12-15 | 2026-12-17 | 2026-12-15 | 2026-12-18 | 2.5 | not_started |  | paint.phase_1 FS, tile.shower_substrate FS, checkpoint.flooring_arrived FS |
| trim.install | interior_finishes | trim | interior_finish | Trim & interior carpentry | trim_carpentry | work | 2 | 2 | 1 | interior_finish 4L Trim after flooring — NOT after paint. | 2026-12-17 | 2026-12-21 | 2026-12-17 | 2026-12-22 | 2.5 | not_started |  | flooring.install FS |
| cabinets.vanity_install | interior_finishes | cabinets_vanity | master_bath | Install vanity | cabinets | work | 0.5 | 2 | 1 | master_bath editor.cabinets Vanity install ~0.5 day. | 2026-12-17 | 2026-12-17 | 2026-12-17 | 2026-12-22 | 2.5 | not_started |  | flooring.install FS, checkpoint.vanity_arrived FS |
| retrofit.hall_bath_window_infill | interior_finishes | hall_bath_mod | hall_bath_bedroom_closeout | Hall bath window infill (framing/insulation patch) | framing | work | 0.5 | 2 | 1 | hall_bath_bedroom_closeout retrofit.detect, 4V Retrofit component — window infill in existing hall bath. Signal B (existing) + Signal A (hall bath not in objective). | 2026-10-19 | 2026-10-19 | 2026-10-19 | 2026-12-23 | 43 | not_started |  | demo.hall_bath_window FS |
| retrofit.hallway_switch_relocate | interior_finishes | hall_bath_mod | electrical | Relocate hallway switch (drywall patch, prime, paint) | electrical | work | 0.5 | 2 | 1 | electrical retrofit.detect Retrofit hallway switch relocate — hallway not in addition objective. Runs after drywall for patch/paint continuity. | 2026-12-11 | 2026-12-11 | 2026-12-11 | 2026-12-23 | 8.5 | not_started |  | drywall.consolidated FS |
| electrical.finish | finish_trades | finish_electrical | electrical | Electrical finish (recessed, vanity lights, outlets, dimmers) | electrical | work | 2 | 2 | 1 | electrical 4L Finish devices after paint phase 1. 12 recessed + 2 vanity + fan/light + outlets + dimmers. | 2026-12-14 | 2026-12-15 | 2026-12-14 | 2026-12-21 | 5 | not_started |  | paint.phase_1 FS |
| plumbing.finish | finish_trades | finish_plumbing | plumbing | Plumbing finish (fixtures + trim) | plumbing | work | 1.5 | 2 | 1 | plumbing 4L Plumbing finish after cabinets + flooring + tile grout. | 2026-12-22 | 2026-12-23 | 2026-12-22 | 2026-12-22 | 0 | not_started |  | cabinets.vanity_install FS, flooring.install FS, tile.grout_seal FS |
| hvac.minisplit_install | finish_trades | finish_hvac | hvac | Mini-split install | hvac | work | 1 | 1 | 1 | hvac 4N, editor.minisplit Mini-split install 1d/1p. Staggered AFTER electrical.finish per 4N to keep interior at ≤2 concurrent trades. | 2026-12-16 | 2026-12-16 | 2026-12-16 | 2026-12-23 | 5 | not_started |  | paint.phase_1 FS, checkpoint.minisplit_arrived FS, electrical.finish FS |
| glazing.shower_install | finish_trades | shower_glass | master_bath | Install shower glass enclosure | glazing | work | 0.5 | 2 | 1 | master_bath editor.glazing Shower glass install after plumbing finish. | 2027-01-07 | 2027-01-07 | 2027-01-07 | 2027-01-08 | 1 | not_started |  | checkpoint.shower_glass_arrived FS, plumbing.finish FS |
| paint.phase_2 | interior_finishes | paint_phase2 | interior_finish | Paint phase 2 (final wall coat) | paint | work | 1 | 2 | 1 | interior_finish 4F Paint phase 2 gates on EVERY finish trade including retrofit patches. Last work task on site. | 2026-12-28 | 2026-12-28 | 2026-12-28 | 2026-12-28 | 0 | not_started |  | trim.install FS, flooring.install FS, cabinets.vanity_install FS, tile.grout_seal FS, plumbing.finish FS, electrical.finish FS, hvac.minisplit_install FS, retrofit.hall_bath_window_infill FS, retrofit.hallway_switch_relocate FS |
| milestone.substantial_completion | interior_finishes | paint_phase2 | interior_finish | Substantial completion | general | milestone | 0 | 0 | 0 | interior_finish 4F Substantial completion fires at paint.phase_2 end — home is usable. | 2026-12-29 | 2026-12-29 | 2026-12-29 | 2026-12-29 | 0 | not_started |  | paint.phase_2 FS |
| closeout.pm_walkthrough | closeout | punch_and_closeout | hall_bath_bedroom_closeout | PM walkthrough + punch list generation | pm | work | 0.5 | 1 | 1 | hall_bath_bedroom_closeout editor.closeout PM walkthrough creates punch list. | 2026-12-29 | 2026-12-29 | 2026-12-29 | 2026-12-29 | 0 | not_started |  | milestone.substantial_completion FS |
| closeout.punch_list_work | closeout | punch_and_closeout | hall_bath_bedroom_closeout | Punch-list work | general | work | 2 | 2 | 1 | hall_bath_bedroom_closeout editor.closeout Multiple trades return for short punch items. | 2026-12-29 | 2026-12-31 | 2026-12-29 | 2026-12-29 | 0 | not_started |  | closeout.pm_walkthrough FS |
| closeout.final_clean | closeout | punch_and_closeout | hall_bath_bedroom_closeout | Final clean | cleanup | work | 1 | 2 | 0 | hall_bath_bedroom_closeout editor.closeout Final clean before inspection. | 2026-12-31 | 2027-01-04 | 2026-12-31 | 2026-12-31 | 0 | not_started |  | closeout.punch_list_work FS |
| inspect.final_bundled | closeout | punch_and_closeout | hall_bath_bedroom_closeout | Final bundled inspection (E/P/M + building) | inspector | inspection | 0.5 | 1 | 1 | hall_bath_bedroom_closeout 4M All finals bundled: E/P/M + final building, ONE inspector. | 2027-01-06 | 2027-01-06 | 2027-01-06 | 2027-01-06 | 0 | not_started |  | closeout.final_clean FS 2 |
| closeout.wills_walkthrough | closeout | punch_and_closeout | hall_bath_bedroom_closeout | Will's final walkthrough with customer | general | work | 0.5 | 1 | 1 | hall_bath_bedroom_closeout addition.wills_walkthrough Will's personal final walkthrough — closes the project. | 2027-01-08 | 2027-01-08 | 2027-01-08 | 2027-01-08 | 0 | not_started |  | inspect.final_bundled FS 1 |
